# Dokumentation_Projects

Schedule from MS Project, 2026-02-13 to 2026-06-09.

## Calendars

- Standard: Mon-Fri 08:00-12:00, 13:00-17:00; Sat-Sun off.

## Resources

| Resource |
| --- |
| MA1 |
| MA2 |
| MA3 |
| Chef |
| Alexander |
| Julian |
| Philipp |
| Felix |

## Schedule

| ID | WBS | Task | Type | Duration | Start | Finish | Predecessors | Resources | Work |
| --- | --- | --- | --- | --- | --- | --- | --- | --- | --- |
| 1 | 1 | Projektidee fixiert | manual | 5d | 2026-02-13 | 2026-02-19 |  | Alexander; Julian; Philipp; Felix | 160h |
| 2 | 2 | Einrichtung von GitHUB | manual | 1d | 2026-02-13 | 2026-02-13 | 1 | Alexander | 8h |
| 3 | 3 | Kommunikatoinsverzeichnis erstellen | manual | 7d | 2026-02-13 | 2026-02-23 | 1 | Alexander | 56h |
| 4 | 4 | Pflichtenheft erstellen | manual | 6d | 2026-02-20 | 2026-02-27 | 3 | Alexander; Felix; Julian; Philipp | 192h |
| 5 | 5 | Projektanalyse durchführen | manual | 6d | 2026-02-27 | 2026-03-06 | 4 | Alexander; Felix; Julian; Philipp | 192h |
| 6 | 6 | Produktstrukturplan erstellen | manual | 5d | 2026-03-06 | 2026-03-12 | 5 | Alexander; Felix; Philipp | 120h |
| 7 | 7 | Objektstrukturplan erstellen | manual | 5d | 2026-03-06 | 2026-03-12 | 6 | Alexander; Felix; Philipp | 120h |
| 8 | 8 | Einrichtung von MS Projects | manual | 3d | 2026-03-13 | 2026-03-17 | 7 | Alexander | 24h |
| 9 | 9 | Grobplanung abgeschlossen | milestone, manual | 0d | 2026-03-20 | 2026-03-20 | 8 |  |  |
| 11 | 10 | Systemarchitektur definieren | manual | 4d | 2026-03-20 | 2026-03-25 |  | Alexander; Julian; Philipp; Felix | 128h |
| 12 | 11 | Datenbank-Design erstellen | manual | 8d | 2026-03-27 | 2026-04-07 |  | Felix; Philipp; Julian; Alexander | 256h |
| 13 | 12 | Tabellenstruktur PostgreSQL erstellen | manual | 4d | 2026-04-07 | 2026-04-10 |  | Felix; Philipp; Alexander; Julian | 128h |
| 14 | 13 | Schnittstellen PHP/DB definieren | manual | 3d | 2026-04-10 | 2026-04-14 |  | Felix; Philipp; Alexander; Julian | 96h |
| 15 | 14 | Systemdesign abgeschlossen | milestone, manual | 0d | 2026-04-14 | 2026-04-14 |  |  |  |
| 17 | 15 | Datenbank in Docker einrichten | manual | 4d | 2026-04-14 | 2026-04-17 |  | Alexander; Felix; Philipp; Julian | 128h |
| 18 | 16 | Tabellen implementieren | manual | 3d | 2026-04-17 | 2026-04-21 |  | Alexander; Chef; Julian; Philipp | 96h |
| 19 | 17 | PHP Verbindung zur DB | manual | 4d | 2026-04-21 | 2026-04-24 |  | Alexander; Felix; Julian; Philipp | 128h |
| 20 | 18 | Speicherung der Zustände | manual | 4d | 2026-04-28 | 2026-05-01 |  | Alexander; Felix; Julian; Philipp | 128h |
| 21 | 19 | Historie erstellen | manual | 3d | 2026-05-01 | 2026-05-05 |  | Alexander; Felix; Julian; Philipp | 96h |
| 22 | 20 | Backend fertig | milestone, manual | 0d | 2026-05-05 | 2026-05-05 |  |  |  |
| 24 | 21 | HTML Struktur erstellen | manual | 4d | 2026-05-05 | 2026-05-08 |  | Alexander; Felix; Julian; Philipp | 128h |
| 25 | 22 | Layout (Raum, Elemente) | manual | 3d | 2026-05-08 | 2026-05-12 |  | Alexander; Felix; Julian; Philipp | 96h |
| 26 | 23 | CSS implementieren | manual | 4d | 2026-05-12 | 2026-05-15 |  | Alexander; Chef; Julian; Philipp | 128h |
| 27 | 24 | Responsive Design | manual | 3d | 2026-05-15 | 2026-05-19 |  | Alexander; Felix; Julian; Philipp | 96h |
| 28 | 25 | Javascript Grundlogik | manual | 4d | 2026-05-19 | 2026-05-22 |  | Alexander; Chef; Julian; Philipp | 128h |
| 29 | 26 | Licht AN/AUS funktion | manual | 4d | 2026-05-26 | 2026-05-29 |  | Alexander; Felix; Julian; Philipp | 128h |
| 30 | 27 | Statusanzeige einbauen | manual | 4d | 2026-05-26 | 2026-05-29 |  | Alexander; Felix; Julian; Philipp | 128h |
| 31 | 28 | Historie anzeigen | manual | 4d | 2026-05-26 | 2026-05-29 |  | Alexander; Chef; Julian; Philipp | 128h |
| 32 | 29 | Frontend fertig | milestone, manual | 0d | 2026-05-29 | 2026-05-29 |  |  |  |
| 34 | 30 | Shellys einrichten | manual | 4d | 2026-05-12 | 2026-05-15 |  | Alexander; Felix; Julian; Philipp | 128h |
| 35 | 31 | Nertwerkverbindung der Shellys prüfen | manual | 3d | 2026-05-15 | 2026-05-19 |  | Alexander; Felix; Julian; Philipp | 96h |
| 36 | 32 | Shelly per PHP ansteuern | manual | 4d | 2026-05-19 | 2026-05-22 |  | Alexander; Felix; Julian; Philipp | 128h |
| 37 | 33 | Schaltbefehle testen | manual | 4d | 2026-05-26 | 2026-05-29 |  | Alexander; Felix; Julian; Philipp | 128h |
| 38 | 34 | Shellys Anbindung fertig | milestone, manual | 0d | 2026-05-29 | 2026-05-29 |  |  |  |
| 40 | 35 | Frontend mit Backend verbindung | manual | 4d | 2026-06-02 | 2026-06-05 |  | Alexander; Felix; Julian; Philipp | 128h |
| 41 | 36 | Website mit Shelly-Steuerung verbindung | manual | 4d | 2026-06-02 | 2026-06-05 |  | Alexander; Felix; Julian; Philipp | 128h |
| 42 | 37 | Aufrufe testen | manual | 1d | 2026-06-05 | 2026-06-05 |  | Alexander; Felix; Julian; Philipp | 32h |
| 43 | 38 | System integriert | milestone, manual | 0d | 2026-06-05 | 2026-06-05 |  |  |  |
| 45 | 39 | Funktionstest durchführen | manual | 3d | 2026-06-05 | 2026-06-09 |  | Alexander; Julian | 48h |
| 46 | 40 | Tests/Bugs beheben | manual | 3d | 2026-06-05 | 2026-06-09 |  | Alexander; Felix; Julian; Philipp | 96h |
| 47 | 41 | System getestet | milestone, manual | 0d | 2026-06-09 | 2026-06-09 |  |  |  |
| 49 | 42 | Dokumentationen überprüfen | manual | 3d | 2026-06-05 | 2026-06-09 |  | Alexander; Felix; Julian; Philipp | 96h |
| 50 | 43 | Präsentation vorbereiten | manual | 3d | 2026-06-05 | 2026-06-09 |  | Alexander; Felix; Julian; Philipp | 96h |
| 51 | 44 | Demo vorbereiten | manual | 3d | 2026-06-05 | 2026-06-09 |  | Alexander; Felix; Julian; Philipp | 96h |
| 52 | 45 | Projekt abgeschlossen | milestone, manual | 0d | 2026-06-09 | 2026-06-09 |  |  |  |
